# E2F IS

Schedule from MS Project, 2020-12-02 to 2021-07-19, costs in €.
E2F
New information system to solve E2F’s current data problems and limitations.
New information system to solve E2Fs current data problems and limitations.

## Calendars

- E2F Project Calendar: Mon-Fri 08:00-12:00, 13:00-17:00; Sat-Sun off. Exceptions (off unless hours are given): 2020-12-07 (Non-working Days), 2020-12-08 (Dia da Imaculada Conceição), 2020-12-24 (Véspera de Natal), 2020-12-25 (Natal), 2020-12-28 to 2020-12-31 (Non-working Days), 2021-01-01 (Dia de Ano Novo), 2021-04-02 (Sexta-Feira Santa), 2021-04-25 (Dia da Liberdade - 25 de Abril), 2021-05-01 (Dia do Trabalhador), 2021-06-03 (Corpo de Deus), 2021-06-10 (Dia de Portugal).

## Resources

| Resource | Group | Rate | Cost per use |
| --- | --- | --- | --- |
| Project Owner | E2F |  |  |
| Project Sponsor | E2F |  |  |
| E2F Project Manager | E2F |  |  |
| BoD member 1 (Communication) | E2F |  |  |
| BoD Member 2 (Trainning) | E2F |  |  |
| Secretary Staff | E2F |  |  |
| Account Specialist | E2F |  |  |
| Project Manager | Our Team | 43.75 |  |
| Technical Coordinator | Our Team | 31.25 |  |
| Technical Consultant 1 | Our Team | 25 |  |
| Technical Consultant 2 | Our Team | 25 |  |
| Technical Trainee 1 | Our Team | 15 |  |
| Technical Trainee 2 | Our Team | 15 |  |
| Scrum Master | Our Team | 31.25 |  |
| Scrum Consultant 1 | Our Team | 25 |  |
| Scrum Consultant 2 | Our Team | 25 |  |
| ISTExpert (paid) | OutSource |  | 40000 |
| ISTExpert | OutSource |  |  |

## Schedule

| ID | WBS | Task | Type | Duration | Start | Finish | Predecessors | Total slack | Constraint | Resources | Work | Cost |
| --- | --- | --- | --- | --- | --- | --- | --- | --- | --- | --- | --- | --- |
| 1 | 1 | **Project Management** |  | 97d | 2020-12-02 | 2021-04-29 |  | 0d |  |  | 560h | 10,450 |
| 2 | 1.1 | **Initiation** |  | 3d | 2020-12-02 | 2020-12-04 |  | 0d |  |  | 48h |  |
| 3 | 1.1.1 | Review Project Charter |  | 1d | 2020-12-02 | 2020-12-02 |  | 0d |  | Project Owner; E2F Project Manager | 16h |  |
| 4 | 1.1.2 | Review Stakeholders Identification |  | 1d | 2020-12-03 | 2020-12-03 | 3 | 0d |  | Project Owner; E2F Project Manager | 16h |  |
| 5 | 1.1.3 | Establish Project Team |  | 1d | 2020-12-04 | 2020-12-04 | 4 | 0d |  | E2F Project Manager; Project Owner | 16h |  |
| 6 | 1.1.4 | Project Started | milestone | 0d | 2020-12-04 | 2020-12-04 | 5 | 0d |  |  |  |  |
| 7 | 1.2 | **Planning** |  | 5d | 2020-12-09 | 2020-12-15 |  | 0d |  |  | 136h | 2,750 |
| 8 | 1.2.1 | Review Project Scope and Time |  | 1d | 2020-12-09 | 2020-12-09 | 6 | 0d |  | E2F Project Manager; Project Manager; Project Owner | 24h | 350 |
| 9 | 1.2.2 | Define Project Organization |  | 1d | 2020-12-10 | 2020-12-10 | 8 | 0d |  | E2F Project Manager; Project Manager | 16h | 350 |
| 10 | 1.2.3 | Define communication plan |  | 1d | 2020-12-11 | 2020-12-11 | 9 | 0d |  | E2F Project Manager; Project Manager | 16h | 350 |
| 11 | 1.2.4 | Review project Plan |  | 1d | 2020-12-14 | 2020-12-14 | 10 | 0d |  | Project Owner; E2F Project Manager; Project Manager; Technical Coordinator; Scrum Master | 40h | 850 |
| 12 | 1.2.5 | Kick-off meeting |  | 1d | 2020-12-15 | 2020-12-15 | 11 | 0d |  | Project Owner; E2F Project Manager; Project Manager; Scrum Master; Technical Coordinator | 40h | 850 |
| 13 | 1.2.6 | Project Plan Approved | milestone | 0d | 2020-12-15 | 2020-12-15 | 12 | 0d |  |  |  |  |
| 14 | 1.3 | **Project Control** |  | 73d | 2020-12-16 | 2021-04-07 | 13 |  |  |  | 272h | 5,950 |
| 15 | 1.3.1 | Project Control 1 |  | 1d | 2020-12-16 | 2020-12-16 |  | 143d | start no earlier than 2020-12-16 | E2F Project Manager; Project Manager | 16h | 350 |
| 16 | 1.3.2 | Project Control 2 |  | 1d | 2020-12-23 | 2020-12-23 |  | 138d | start no earlier than 2020-12-23 | E2F Project Manager; Project Manager | 16h | 350 |
| 17 | 1.3.3 | Project Control 3 |  | 1d | 2021-01-04 | 2021-01-04 |  | 137d | start no earlier than 2020-12-30 | E2F Project Manager; Project Manager | 16h | 350 |
| 18 | 1.3.4 | Project Control 4 |  | 1d | 2021-01-06 | 2021-01-06 |  | 135d | start no earlier than 2021-01-06 | E2F Project Manager; Project Manager | 16h | 350 |
| 19 | 1.3.5 | Project Control 5 |  | 1d | 2021-01-13 | 2021-01-13 |  | 130d | start no earlier than 2021-01-13 | E2F Project Manager; Project Manager | 16h | 350 |
| 20 | 1.3.6 | Project Control 6 |  | 1d | 2021-01-20 | 2021-01-20 |  | 125d | start no earlier than 2021-01-20 | E2F Project Manager; Project Manager | 16h | 350 |
| 21 | 1.3.7 | Project Control 7 |  | 1d | 2021-01-27 | 2021-01-27 |  | 120d | start no earlier than 2021-01-27 | E2F Project Manager; Project Manager | 16h | 350 |
| 22 | 1.3.8 | Project Control 8 |  | 1d | 2021-02-03 | 2021-02-03 |  | 115d | start no earlier than 2021-02-03 | E2F Project Manager; Project Manager | 16h | 350 |
| 23 | 1.3.9 | Project Control 9 |  | 1d | 2021-02-10 | 2021-02-10 |  | 110d | start no earlier than 2021-02-10 | E2F Project Manager; Project Manager | 16h | 350 |
| 24 | 1.3.10 | Project Control 10 |  | 1d | 2021-02-17 | 2021-02-17 |  | 105d | start no earlier than 2021-02-17 | E2F Project Manager; Project Manager | 16h | 350 |
| 25 | 1.3.11 | Project Control 11 |  | 1d | 2021-02-24 | 2021-02-24 |  | 100d | start no earlier than 2021-02-24 | E2F Project Manager; Project Manager | 16h | 350 |
| 26 | 1.3.12 | Project Control 12 |  | 1d | 2021-03-03 | 2021-03-03 |  | 95d | start no earlier than 2021-03-03 | E2F Project Manager; Project Manager | 16h | 350 |
| 27 | 1.3.13 | Project Control 13 |  | 1d | 2021-03-10 | 2021-03-10 |  | 90d | start no earlier than 2021-03-10 | E2F Project Manager; Project Manager | 16h | 350 |
| 28 | 1.3.14 | Project Control 14 |  | 1d | 2021-03-17 | 2021-03-17 |  | 85d | start no earlier than 2021-03-17 | E2F Project Manager; Project Manager | 16h | 350 |
| 29 | 1.3.15 | Project Control 15 |  | 1d | 2021-03-24 | 2021-03-24 |  | 80d | start no earlier than 2021-03-24 | E2F Project Manager; Project Manager | 16h | 350 |
| 30 | 1.3.16 | Project Control 16 |  | 1d | 2021-03-31 | 2021-03-31 |  | 75d | start no earlier than 2021-03-31 | E2F Project Manager; Project Manager | 16h | 350 |
| 31 | 1.3.17 | Project Control 17 |  | 1d | 2021-04-07 | 2021-04-07 |  | 71d | start no earlier than 2021-04-07 | E2F Project Manager; Project Manager | 16h | 350 |

| ID | WBS | Task | Type | Duration | Start | Finish | Predecessors | Total slack | Free slack | Resources | Work | Cost |
| --- | --- | --- | --- | --- | --- | --- | --- | --- | --- | --- | --- | --- |
| 32 | 1.4 | **Project Close** |  | 5d | 2021-04-23 | 2021-04-29 |  | 55d |  |  | 104h | 1,750 |
| 33 | 1.4.1 | Review project objectives |  | 2d | 2021-04-23 | 2021-04-26 | 133 | 55d | 0d | Project Owner; E2F Project Manager; Project Manager | 48h | 700 |
| 34 | 1.4.2 | Collect Lessons Learned |  | 1d | 2021-04-27 | 2021-04-27 | 33 | 55d | 0d | E2F Project Manager; Project Manager | 16h | 350 |
| 35 | 1.4.3 | Provide Feedback |  | 1d | 2021-04-28 | 2021-04-28 | 34 | 55d | 0d | E2F Project Manager; Project Manager | 16h | 350 |
| 36 | 1.4.4 | Close contracts |  | 1d | 2021-04-29 | 2021-04-29 | 35 | 55d | 0d | E2F Project Manager; Project Manager; Project Owner | 24h | 350 |
| 37 | 1.4.5 | Project Closed | milestone | 0d | 2021-04-29 | 2021-04-29 | 36 | 55d |  |  |  |  |
| 38 | 2 | **Analysis** |  | 15d | 2020-12-16 | 2021-01-14 |  | 0d |  |  | 208h | 5,750 |
| 39 | 2.1 | **As Is Analysis** |  | 5d | 2020-12-16 | 2020-12-22 |  | 0d |  |  | 64h | 1,850 |
| 40 | 2.1.1 | Analyse how the process are executed now |  | 3d | 2020-12-16 | 2020-12-18 | 13 | 0d |  | Technical Coordinator; Technical Consultant 1 | 48h | 1,350 |
| 41 | 2.1.2 | Document the analysis |  | 2d | 2020-12-21 | 2020-12-22 | 40 | 0d |  | Technical Coordinator | 16h | 500 |
| 42 | 2.1.3 | Analysis Approved | milestone | 0d | 2020-12-22 | 2020-12-22 | 41 | 0d |  |  |  |  |
| 43 | 2.2 | **Requirements Specification** |  | 10d | 2020-12-23 | 2021-01-14 |  | 0d |  |  | 144h | 3,900 |
| 44 | 2.2.1 | Survey Stakeholders |  | 2d | 2020-12-23 | 2021-01-04 | 42 | 0d |  | Technical Coordinator | 16h | 500 |
| 45 | 2.2.2 | Lay out functional and non-functional requirements |  | 3d | 2021-01-05 | 2021-01-07 | 44 | 0d |  | Technical Coordinator; Technical Consultant 1 | 48h | 1,350 |
| 46 | 2.2.3 | Review the specifications |  | 2d | 2021-01-08 | 2021-01-11 | 45 | 0d |  | Technical Coordinator; Technical Consultant 1 | 32h | 900 |
| 47 | 2.2.4 | Approve requirements |  | 1d | 2021-01-12 | 2021-01-12 | 46 | 0d |  | Technical Coordinator; Project Owner | 16h | 250 |
| 48 | 2.2.5 | Analyze data for parameterization |  | 2d | 2021-01-13 | 2021-01-14 | 47 | 0d |  | Technical Coordinator; Technical Consultant 1 | 32h | 900 |
| 49 | 2.2.6 | Requirements Specification Approved | milestone | 0d | 2021-01-14 | 2021-01-14 | 48 | 0d |  |  |  |  |
| 50 | 3 | **Design** |  | 10d | 2021-01-15 | 2021-01-28 |  | 0d |  |  | 256h | 6,100 |
| 51 | 3.1 | **Test Specifications** |  | 5d | 2021-01-22 | 2021-01-28 |  | 0d |  |  | 136h | 3,250 |
| 52 | 3.1.1 | Lay out the tests criteria and specifications |  | 2d | 2021-01-22 | 2021-01-25 | 61 | 0d |  | Technical Coordinator; Technical Consultant 1; Technical Trainee 1 | 48h | 1,140 |
| 53 | 3.1.2 | Determine required resources |  | 1d | 2021-01-26 | 2021-01-26 | 52 | 0d |  | Technical Coordinator; Technical Consultant 2; Technical Trainee 2 | 24h | 570 |
| 54 | 3.1.3 | Elaborate and design different types of tests |  | 2d | 2021-01-27 | 2021-01-28 | 53 | 0d |  | Technical Coordinator; Technical Trainee 2; Technical Consultant 1; Technical Consultant 2 | 64h | 1,540 |
| 55 | 3.1.4 | Tests Specifications Completed | milestone | 0d | 2021-01-28 | 2021-01-28 | 54 | 0d |  |  |  |  |

| ID | WBS | Task | Type | Duration | Start | Finish | Predecessors | Total slack | Free slack | Resources | Work | Cost |
| --- | --- | --- | --- | --- | --- | --- | --- | --- | --- | --- | --- | --- |
| 56 | 3.2 | **System Architecture** |  | 5d | 2021-01-15 | 2021-01-21 |  | 0d |  |  | 120h | 2,850 |
| 57 | 3.2.1 | Design the interface’s architecture |  | 1d | 2021-01-15 | 2021-01-15 | 49 | 0d |  | Technical Coordinator; Technical Trainee 1; Technical Consultant 1 | 24h | 570 |
| 58 | 3.2.2 | Lay out how the new interface will communicate and be integrated with the other interfaces |  | 2d | 2021-01-18 | 2021-01-19 | 57 | 0d |  | Technical Coordinator; Technical Trainee 1; Technical Consultant 1 | 48h | 1,140 |
| 59 | 3.2.3 | Establish which interface permissions should be attributed to which users |  | 1d | 2021-01-20 | 2021-01-20 | 58 | 0d |  | Technical Coordinator; Technical Trainee 2; Technical Consultant 2 | 24h | 570 |
| 60 | 3.2.4 | Establish when interface permissions should be altered or revoked |  | 1d | 2021-01-21 | 2021-01-21 | 59 | 0d |  | Technical Coordinator; Technical Trainee 2; Technical Consultant 2 | 24h | 570 |
| 61 | 3.2.5 | System Architecture Approved | milestone | 0d | 2021-01-21 | 2021-01-21 | 60 | 0d |  |  |  |  |
| 62 | 4 | **Realization** |  | 59d | 2021-01-29 | 2021-04-22 |  | 0d |  |  | 2818h | 102,862.5 |
| 63 | 4.1 | **Associates Management Module** |  | 15d | 2021-01-29 | 2021-02-18 |  | 1d |  |  | 304h | 6,800 |
| 64 | 4.1.1 | Configure module |  | 4d | 2021-01-29 | 2021-02-03 | 55 | 1d | 0d | Technical Consultant 1; Technical Trainee 1; Technical Coordinator [50%] | 80h | 1,780 |
| 65 | 4.1.2 | Define profiles |  | 2d | 2021-02-04 | 2021-02-05 | 64 | 1d | 0d | Technical Consultant 1 [50%]; Technical Trainee 1 [50%]; Technical Coordinator [50%] | 24h | 570 |
| 66 | 4.1.3 | Establish privileges of the profiles |  | 6d | 2021-02-08 | 2021-02-15 | 65 | 1d | 0d | Technical Consultant 1 [50%]; Technical Trainee 1 [50%]; Technical Coordinator [25%] | 60h | 1,335 |
| 67 | 4.1.4 | Alter and customize an information system already being used by other Portuguese associations |  | 8d | 2021-02-04 | 2021-02-15 | 65SS | 1d | 0d | Technical Consultant 1 [50%]; Technical Trainee 1 [50%]; Technical Coordinator [25%] | 80h | 1,780 |
| 68 | 4.1.5 | Fulfill requirements |  | 3d | 2021-02-16 | 2021-02-18 | 67, 65, 66 | 1d | 0d | Technical Consultant 1; Technical Trainee 1; Technical Coordinator [50%] | 60h | 1,335 |
| 69 | 4.1.6 | Associates Management Module Completed | milestone | 0d | 2021-02-18 | 2021-02-18 | 68 | 1d | 0d |  |  |  |
| 70 | 4.2 | **Training Management Module** |  | 15d | 2021-01-29 | 2021-02-18 |  | 6d |  |  | 290h | 6,362.5 |
| 71 | 4.2.1 | Customize the Moodle open-source system |  | 4d | 2021-01-29 | 2021-02-03 | 55 | 6d | 0d | Technical Consultant 2; Technical Coordinator [50%]; Technical Trainee 2 | 80h | 1,780 |
| 72 | 4.2.2 | Create access to courses, materials, forums and training support |  | 5d | 2021-02-04 | 2021-02-10 | 71 | 6d | 0d | Technical Consultant 2; Technical Coordinator [25%]; Technical Trainee 2 | 90h | 1,912.5 |
| 73 | 4.2.3 | Define profiles and its privileges |  | 3d | 2021-02-11 | 2021-02-15 | 72 | 6d | 0d | Technical Consultant 2; Technical Coordinator [50%]; Technical Trainee 2 | 60h | 1,335 |
| 74 | 4.2.4 | Fulfill other necessary requirements |  | 3d | 2021-02-16 | 2021-02-18 | 73 | 6d | 0d | Technical Consultant 2; Technical Coordinator [50%]; Technical Trainee 2 | 60h | 1,335 |
| 75 | 4.2.5 | Training Management module Completed | milestone | 0d | 2021-02-18 | 2021-02-18 | 74 | 6d | 5d |  |  |  |
| 76 | 4.3 | **Library Management Module** |  | 10d | 2021-01-29 | 2021-02-11 |  | 11d |  |  | 80h | 20,000 |
| 77 | 4.3.1 | Integration with the software provided by ISTExperts |  | 7d | 2021-01-29 | 2021-02-08 | 55 | 11d | 0d | ISTExpert [50%] | 28h |  |
| 78 | 4.3.2 | Correct any non-conformities found |  | 7d | 2021-01-29 | 2021-02-08 | 77FF | 11d | 0d | ISTExpert [50%] | 28h |  |
| 79 | 4.3.3 | Fulfill other necessary requirements |  | 3d | 2021-02-09 | 2021-02-11 | 78 | 11d | 0d | ISTExpert | 24h |  |
| 80 | 4.3.4 | Library Management module Completed | milestone | 0d | 2021-02-11 | 2021-02-11 | 79 | 11d | 10d | ISTExpert (paid) [50%] |  | 20,000 |

| ID | WBS | Task | Type | Duration | Start | Finish | Predecessors | Total slack | Free slack | Resources | Work | Cost |
| --- | --- | --- | --- | --- | --- | --- | --- | --- | --- | --- | --- | --- |
| 81 | 4.4 | **Electronic Voting Module** |  | 5d | 2021-02-19 | 2021-02-25 |  | 1d |  |  | 144h | 3,450 |
| 82 | 4.4.1 | Define profiles and respective privileges |  | 3d | 2021-02-19 | 2021-02-23 | 69 | 1d | 0d | Technical Coordinator; Technical Trainee 2; Technical Consultant 1; Technical Consultant 2 | 96h | 2,310 |
| 83 | 4.4.2 | Fulfill requirements |  | 2d | 2021-02-24 | 2021-02-25 | 82 | 1d | 0d | Technical Coordinator; Technical Trainee 1; Technical Consultant 1 | 48h | 1,140 |
| 84 | 4.4.3 | Electronic Voting module Completed | milestone | 0d | 2021-02-25 | 2021-02-25 | 83 | 1d | 0d |  |  |  |
| 85 | 4.5 | **Communication Module** |  | 31d | 2021-01-29 | 2021-03-12 |  | 0d |  |  | 800h | 20,150 |
| 86 | 4.5.1 | Create Sprint Backlog |  | 1d | 2021-01-29 | 2021-01-29 | 55 | 0d |  | Scrum Master; Scrum Consultant 2; Scrum Consultant 1; BoD member 1 (Communication) | 32h | 650 |
| 87 | 4.5.2 | **Sprint 1** |  | 10d | 2021-02-01 | 2021-02-12 |  | 0d |  |  | 256h | 6,500 |
| 88 | 4.5.2.1 | Plan sprint work |  | 1d | 2021-02-01 | 2021-02-01 | 86 | 0d |  | Scrum Master; Scrum Consultant 2; Scrum Consultant 1; BoD member 1 (Communication) | 32h | 650 |
| 89 | 4.5.2.2 | Execute sprint work |  | 8d | 2021-02-02 | 2021-02-11 | 88 | 0d |  | Scrum Master; Scrum Consultant 2; Scrum Consultant 1 | 192h | 5,200 |
| 90 | 4.5.2.3 | Review sprint |  | 1d | 2021-02-12 | 2021-02-12 | 89 | 0d |  | Scrum Master; Scrum Consultant 2; Scrum Consultant 1; BoD member 1 (Communication) | 32h | 650 |
| 91 | 4.5.2.4 | Sprint Completed | milestone | 0d | 2021-02-12 | 2021-02-12 | 90 | 0d |  |  |  |  |
| 92 | 4.5.3 | **Sprint 2** |  | 10d | 2021-02-15 | 2021-02-26 |  | 0d |  |  | 256h | 6,500 |
| 93 | 4.5.3.1 | Plan sprint work |  | 1d | 2021-02-15 | 2021-02-15 | 91 | 0d |  | Scrum Master; Scrum Consultant 2; Scrum Consultant 1; BoD member 1 (Communication) | 32h | 650 |
| 94 | 4.5.3.2 | Execute spring work |  | 8d | 2021-02-16 | 2021-02-25 | 93 | 0d |  | Scrum Master; Scrum Consultant 2; Scrum Consultant 1 | 192h | 5,200 |
| 95 | 4.5.3.3 | Review sprint |  | 1d | 2021-02-26 | 2021-02-26 | 94 | 0d |  | Scrum Master; Scrum Consultant 2; Scrum Consultant 1; BoD member 1 (Communication) | 32h | 650 |
| 96 | 4.5.3.4 | Sprint Completed | milestone | 0d | 2021-02-26 | 2021-02-26 | 95 | 0d |  |  |  |  |
| 97 | 4.5.4 | **Sprint 3** |  | 10d | 2021-03-01 | 2021-03-12 |  | 0d |  |  | 256h | 6,500 |
| 98 | 4.5.4.1 | Plan sprint work |  | 1d | 2021-03-01 | 2021-03-01 | 96 | 0d |  | Scrum Master; Scrum Consultant 2; Scrum Consultant 1; BoD member 1 (Communication) | 32h | 650 |
| 99 | 4.5.4.2 | Execute spring work |  | 8d | 2021-03-02 | 2021-03-11 | 98 | 0d |  | Scrum Master; Scrum Consultant 2; Scrum Consultant 1 | 192h | 5,200 |
| 100 | 4.5.4.3 | Review sprint |  | 1d | 2021-03-12 | 2021-03-12 | 99 | 0d |  | Scrum Master; Scrum Consultant 2; Scrum Consultant 1; BoD member 1 (Communication) | 32h | 650 |
| 101 | 4.5.4.4 | Sprint Completed | milestone | 0d | 2021-03-12 | 2021-03-12 | 100 | 0d |  |  |  |  |
| 102 | 4.5.5 | Communication Module Completed | milestone | 0d | 2021-03-12 | 2021-03-12 | 101 | 0d |  |  |  |  |
| 103 | 4.6 | **System API** |  | 10d | 2021-03-15 | 2021-03-26 |  | 0d |  |  | 272h | 6,500 |
| 104 | 4.6.1 | Design and develop the new interface |  | 6d | 2021-03-15 | 2021-03-22 | 110, 102 | 0d |  | Technical Consultant 1; Technical Coordinator; Technical Trainee 1 | 144h | 3,420 |
| 105 | 4.6.2 | Integrate the new interface with other necessary interfaces |  | 4d | 2021-03-23 | 2021-03-26 | 104 | 0d |  | Technical Consultant 1; Technical Consultant 2; Technical Coordinator; Technical Trainee 2 | 128h | 3,080 |
| 106 | 4.6.3 | System API Approved | milestone | 0d | 2021-03-26 | 2021-03-26 | 105 | 0d |  |  |  |  |

| ID | WBS | Task | Type | Duration | Start | Finish | Predecessors | Total slack | Free slack | Resources | Work | Cost |
| --- | --- | --- | --- | --- | --- | --- | --- | --- | --- | --- | --- | --- |
| 107 | 4.7 | **Migration Scripts** |  | 10d | 2021-02-26 | 2021-03-11 |  | 1d |  |  | 304h | 7,300 |
| 108 | 4.7.1 | Create set of scripts to migrate data |  | 8d | 2021-02-26 | 2021-03-09 | 69, 75, 80, 84 | 1d | 0d | Technical Consultant 1; Technical Consultant 2; Technical Coordinator; Technical Trainee 2 | 256h | 6,160 |
| 109 | 4.7.2 | Migrate the set of MS-Excel files |  | 2d | 2021-03-10 | 2021-03-11 | 108 | 1d | 0d | Technical Consultant 1; Technical Coordinator; Technical Trainee 1 | 48h | 1,140 |
| 110 | 4.7.3 | Migration Scripts Completed | milestone | 0d | 2021-03-11 | 2021-03-11 | 109 | 1d | 0d |  |  |  |
| 111 | 4.8 | **Integration Tests** |  | 5d | 2021-03-29 | 2021-04-05 |  | 0d |  |  | 176h | 4,090 |
| 112 | 4.8.1 | Develop integration tests |  | 3d | 2021-03-29 | 2021-03-31 | 119, 106 | 0d |  | Technical Consultant 1; Technical Consultant 2; Technical Coordinator; Technical Trainee 2 | 96h | 2,310 |
| 113 | 4.8.2 | Execute and run integration tests |  | 2d | 2021-04-01 | 2021-04-05 | 112 | 0d |  | Technical Consultant 1; Technical Coordinator; Technical Trainee 1 | 48h | 1,140 |
| 114 | 4.8.3 | Correct any non-conformities found |  | 2d | 2021-04-01 | 2021-04-05 | 113FF | 0d |  | Technical Consultant 2; Technical Trainee 2 | 32h | 640 |
| 115 | 4.8.4 | Integration Tests Completed | milestone | 0d | 2021-04-05 | 2021-04-05 | 114 | 0d |  |  |  |  |
| 116 | 4.9 | **Transition** |  | 29d | 2021-03-12 | 2021-04-22 |  | 0d |  |  | 448h | 28,210 |
| 117 | 4.9.1 | **Installation** |  | 18d | 2021-03-12 | 2021-04-07 |  | 0d |  |  | 72h | 1,710 |
| 118 | 4.9.1.1 | Install the necessary software for the new system to work correctly |  | 1d | 2021-04-06 | 2021-04-06 | 115 | 0d |  | Technical Consultant 1; Technical Coordinator; Technical Trainee 1 | 24h | 570 |
| 119 | 4.9.1.2 | Migrate final data |  | 1d | 2021-03-12 | 2021-03-12 | 110 | 10d |  | Technical Consultant 1; Technical Coordinator; Technical Trainee 1 | 24h | 570 |
| 120 | 4.9.1.3 | Test and validate migration |  | 1d | 2021-04-07 | 2021-04-07 | 118 | 0d |  | Technical Consultant 2; Technical Coordinator; Technical Trainee 2 | 24h | 570 |
| 121 | 4.9.1.4 | Software Installed | milestone | 0d | 2021-04-07 | 2021-04-07 | 120 | 0d |  |  |  |  |
| 122 | 4.9.2 | **Training** |  | 1d | 2021-04-15 | 2021-04-15 |  | 0d |  |  | 16h | 450 |
| 123 | 4.9.2.1 | Train E2F’s end users to use the new Information System |  | 1d | 2021-04-15 | 2021-04-15 | 129 | 0d |  | Technical Coordinator | 8h | 250 |
| 124 | 4.9.2.2 | Provide the necessary documentation |  | 1d | 2021-04-15 | 2021-04-15 | 123SS | 0d |  | Technical Consultant 1 | 8h | 200 |
| 125 | 4.9.2.3 | Training Completed | milestone | 0d | 2021-04-15 | 2021-04-15 | 124, 123 | 0d |  |  |  |  |
| 126 | 4.9.3 | **System Tests** |  | 5d | 2021-04-08 | 2021-04-14 |  | 0d |  |  | 200h | 4,450 |
| 127 | 4.9.3.1 | Run the systems tests |  | 5d | 2021-04-08 | 2021-04-14 | 121 | 0d |  | Technical Consultant 1; Technical Coordinator; Technical Trainee 1 | 120h | 2,850 |
| 128 | 4.9.3.2 | Correct any non-conformities found |  | 5d | 2021-04-08 | 2021-04-14 | 127FF | 0d |  | Technical Trainee 2; Technical Consultant 2 | 80h | 1,600 |
| 129 | 4.9.3.3 | Systems Tests Completed | milestone | 0d | 2021-04-14 | 2021-04-14 | 128 | 0d |  |  |  |  |
| 130 | 4.9.4 | **Acceptance Tests** |  | 5d | 2021-04-16 | 2021-04-22 |  | 0d |  |  | 160h | 21,600 |
| 131 | 4.9.4.1 | Execute tests |  | 5d | 2021-04-16 | 2021-04-22 | 125 | 0d |  | Project Owner; Secretary Staff | 80h |  |
| 132 | 4.9.4.2 | Correct found non-conformities |  | 5d | 2021-04-16 | 2021-04-22 | 131FF | 0d |  | Technical Consultant 1; Technical Trainee 1 | 80h | 1,600 |
| 133 | 4.9.4.3 | System Accepted | milestone | 0d | 2021-04-22 | 2021-04-22 | 132 | 0d |  | ISTExpert (paid) [50%] |  | 20,000 |

| ID | WBS | Task | Duration | Start | Finish | Predecessors | Total slack | Resources | Work | Cost |
| --- | --- | --- | --- | --- | --- | --- | --- | --- | --- | --- |
| 134 | 5 | **Operation** | 60d | 2021-04-23 | 2021-07-19 |  | 0d |  | 48h | 1,500 |
| 135 | 5.1 | **Warranty** | 60d | 2021-04-23 | 2021-07-19 |  | 0d |  | 48h | 1,500 |
| 136 | 5.1.1 | Provide a warranty period as said in the contract (minimum of 3 months | 60d | 2021-04-23 | 2021-07-19 | 133 | 0d | Technical Coordinator [10%] | 48h | 1,500 |
